# Remote Lab Capstone

Schedule from MS Project, 2017-05-12 to 2017-08-16, A marks actual dates.

## Calendars

- Standard: Mon-Fri 08:00-12:00, 13:00-17:00; Sat-Sun off.

## Resources

| Resource |
| --- |
| Unassigned |
| Andrew |
| Paolo |
| Gytautas |
| Gregory |

## Schedule

| ID | Task | Type | Duration | Start | Finish | Predecessors | Complete | Remaining | Total slack | Free slack | Constraint | Resources | Work | Actual work |
| --- | --- | --- | --- | --- | --- | --- | --- | --- | --- | --- | --- | --- | --- | --- |
| 1 | Research AD Converter |  | 6d | 2017-05-12 A | 2017-05-19 A |  | 100% |  |  |  |  | Paolo; Andrew | 96h | 96h |
| 2 | Research Linear Regulator Replacement |  | 6d | 2017-05-12 A | 2017-05-19 A |  | 100% |  |  |  |  | Paolo | 48h | 48h |
| 3 | Research 34-channel LA |  | 6d | 2017-05-12 A | 2017-05-19 A |  | 100% |  |  |  |  |  |  |  |
| 4 | Investigate Previous Board Schematics |  | 6d | 2017-05-12 A | 2017-05-19 A |  | 100% |  |  |  |  | Andrew; Gytautas | 96h | 96h |
| 5 | Research Alternative Options to VB |  | 6d | 2017-05-12 A | 2017-05-19 A |  | 100% |  |  |  |  | Gregory | 48h | 48h |
| 6 | Research Browser Based Remote Desktop Options |  | 6d | 2017-05-12 A | 2017-05-19 A |  | 100% |  |  |  |  | Gytautas; Gregory; Andrew | 144h | 144h |
| 7 | Ready to Create Contract | milestone | 0d | 2017-05-19 A | 2017-05-19 A | 1, 2, 3, 4, 6 | 100% |  |  |  |  |  |  |  |
| 8 | Create Contract Draft #1 |  | 7d | 2017-05-22 A | 2017-05-30 A | 7 | 100% |  |  |  | start no earlier than 2017-05-22 | Andrew [25%]; Gregory [25%]; Gytautas [25%]; Paolo [25%] | 56h | 56h |
| 9 | Finalize Contract Details |  | 7d | 2017-05-31 A | 2017-06-08 A | 8 | 100% |  |  |  |  | Andrew [25%]; Gregory [25%]; Gytautas [25%]; Paolo [25%] | 56h | 56h |
| 10 | Capstone 1 Complete | milestone | 0d | 2017-06-08 A | 2017-06-08 A | 9 | 100% |  |  |  |  |  |  |  |
| 11 | Review Previous PCB Design |  | 4d | 2017-06-09 A | 2017-06-14 A | 10 | 100% |  |  |  | start no later than 2017-06-14 |  |  |  |
| 12 | Modify PCB to Include New Components |  | 7d | 2017-06-30 A | 2017-07-11 | 13, 33, 38, 39, 40, 41 | 25% | 5.25d | 0d |  | start no earlier than 2017-06-14 | Andrew; Paolo | 112h | 28h |
| 13 | Order Parts |  | 12d | 2017-05-22 A | 2017-06-06 | 7 | 50% | 6d | 10.5d | 0d | start no later than 2017-05-25 | Paolo; Andrew [33.3%]; Gregory [33.3%] | 96h | 48h |
| 14 | Research and Buy Case |  | 6.25d | 2017-06-22 A | 2017-06-30 A | 12, 13, 20 | 100% |  |  |  | finish no later than 2017-06-30 | Andrew [66.7%]; Gregory [66.7%]; Gytautas [66.7%] | 100h | 100h |
| 15 | Fix Old Software |  | 7d | 2017-06-09 A | 2017-06-19 A | 10 | 100% |  |  |  |  | Gregory; Gytautas; Paolo | 168h | 168h |
| 16 | Update Software to work with new hardware |  | 5d | 2017-07-18 | 2017-07-25 | 12, 13, 15, 20, 35, 43, 44 |  |  | 5d |  |  | Gregory; Gytautas; Paolo | 120h |  |
| 17 | Contact UW-IT to figure out remote access |  | 40d | 2017-05-26 A | 2017-07-20 A |  | 100% |  |  |  |  |  |  |  |
| 18 | Test remote desktop access |  | 1d | 2017-07-21 A | 2017-07-21 A | 17 | 100% |  |  |  |  | Gytautas | 8h | 8h |
| 19 | Get software installed on lab computer |  | 0.25d | 2017-06-28 A | 2017-06-28 A | 17, 16 | 100% |  |  |  |  | Gregory | 2h | 2h |
| 20 | Order PCB | milestone | 0d | 2017-07-18 | 2017-07-18 | 12, 34 |  |  | -13.12d | 0d |  | Andrew |  |  |
| 21 | Modify Case |  | 21d | 2017-07-10 | 2017-08-07 | 23 |  |  | 2.38d |  | start no earlier than 2017-07-10 | Andrew; Gregory | 336h |  |
| 22 | Component Testing |  | 5d | 2017-06-27 A | 2017-07-03 A | 23 | 100% |  |  |  |  | Andrew; Gregory; Paolo | 120h | 120h |
| 23 | Parts shipping delay |  | 14d | 2017-06-07 A | 2017-06-26 | 13, 14 | 75% | 3.5d | 11.38d | 9d |  |  |  |  |
| 24 | Ready to build PCB | milestone | 0d | 2017-07-27 | 2017-07-27 | 22, 26 |  |  | 0d |  |  |  |  |  |
| 25 | System Testing |  | 7d | 2017-08-01 | 2017-08-10 | 28, 16 |  |  | 0d |  |  | Andrew; Gregory; Gytautas; Paolo | 224h |  |
| 26 | PCB Shipping Delay |  | 7d | 2017-07-18 | 2017-07-27 | 20 |  |  | 0d |  |  |  |  |  |
| 27 | Final System Test |  | 3d | 2017-08-10 | 2017-08-15 | 25, 21, 19, 18 |  |  | 0d |  |  | Andrew; Gregory; Gytautas; Paolo | 96h |  |
| 28 | Assemble/Solder PCB |  | 3d | 2017-07-27 | 2017-08-01 | 24 |  |  | 0d |  |  | Andrew | 24h |  |
| 29 | Ethics Paper(s) |  | 7d | 2017-07-24 | 2017-08-01 |  |  |  | 10.38d |  | start no earlier than 2017-07-24 | Andrew; Gregory; Gytautas; Paolo | 224h |  |
| 30 | Capstone Poster & PPT |  | 14d | 2017-07-18 | 2017-08-07 | 20 |  |  | 7d |  |  | Andrew; Gregory; Gytautas; Paolo | 448h |  |
| 31 | Final Documentation |  | 14d | 2017-07-18 | 2017-08-07 | 20 |  |  | 7d |  | start no earlier than 2017-06-28 | Andrew; Gregory; Gytautas; Paolo | 448h |  |
| 32 | Demo Final System |  | 1d | 2017-08-15 | 2017-08-16 | 27, 21 |  |  | 0d |  |  | Andrew; Gregory; Gytautas; Paolo | 32h |  |
| 33 | Create Schematic for New Motherboard |  | 11.25d | 2017-06-15 A | 2017-06-30 A | 11 | 100% |  |  |  |  | Andrew; Gregory | 138h | 138h |
| 34 | Design review for schematic and PCB |  | 5.12d | 2017-07-11 | 2017-07-18 | 33, 12 |  |  | -13.12d | 0d |  | Andrew; Gregory; Gytautas; Paolo | 164h |  |
| 35 | Restrict GUI Access |  | 5.12d | 2017-06-13 A | 2017-06-19 A | 10 | 100% |  |  |  |  | Paolo | 41h | 41h |
| 36 | Update user guides |  | 3d | 2017-08-10 | 2017-08-15 | 25 |  |  | 1d |  |  | Andrew; Gregory; Gytautas; Paolo | 96h |  |
| 37 | Integrate daughterboard team's software |  | 2d | 2017-08-10 | 2017-08-14 | 15, 19, 25 |  |  | 2d |  |  |  |  |  |
| 38 | Voltage divider for ADC |  | 2d? | 2017-06-20 A | 2017-06-21 A |  | 100% |  |  |  | start no earlier than 2017-06-20 | Andrew; Paolo | 32h | 32h |
| 39 | Test Linear Regulators |  | 1d | 2017-06-20 A | 2017-06-20 A |  | 100% |  |  |  |  | Paolo | 8h | 8h |
| 40 | Map Daughterboard Connectors |  | 1d | 2017-06-20 A | 2017-06-20 A |  | 100% |  |  |  |  | Gregory; Andrew | 16h | 16h |
| 41 | Second LA connection |  | 1d | 2017-06-20 A | 2017-06-20 A |  | 100% |  |  |  |  | Andrew | 8h | 8h |
| 42 | Convert to C# |  | 1d | 2017-06-18 A | 2017-06-18 A |  | 100% |  |  |  |  | Gytautas | 8h | 8h |
| 43 | Write Library for Digital Pots |  | 2d | 2017-06-30 A | 2017-07-03 | 10 | 50% | 1d | 15.38d | 10.38d |  |  |  |  |
| 44 | Create function to change variable volt |  | 2d | 2017-06-30 A | 2017-07-03 | 10 | 50% | 1d | 15.38d | 10.38d | start no earlier than 2017-06-30 |  |  |  |

Notes:
- 1: Link to 24-bit ADC board created by CJMCU: http://alexnld.com/product/cjmcu-1232-ads1232-24bit-analog-to-digital-converter-board-ads1232ipwr-ultra-low-noise-for-arduino/ Link to 24-bit TIs ADS1232 ADC: http://www.ti.com/product/ads1232 Research needs to be done on Successive Approximation ADC. DO NOT WANT TO USE A Sigma Delta ADC
- 2: Needs to produce 1 Amp at +/- 10 ( or 15? ) volts. Some options include : Design Varibale Switching Regulator Linear Voltage Regulator ( currently implemented! heat warning! ) Set Value Relay Options ( Greg's Idea )
- 3: Don't really need to research this as much as investigate how it might be pin-mapped to the daugherboards.
- 4: Having issues with opening the files currently. Andrew has reached out to previous group for files but has not yet received anything back.
- 6: It would be ideal if we could implement and use a browser based remote desktop application. Initial options could include: Splashtop
- 13: Need to order ADC Linear voltage regulator resistors capacitors heatsinks fans
